# 信宜市人民医院信息化建设

Schedule from a web Gantt chart, 2024-07-16 to 2024-08-31.
Every day is a working day

## Schedule

| ID | WBS | Task | Type | Duration | Start | Finish | Complete |
| --- | --- | --- | --- | --- | --- | --- | --- |
| 2 | 1 | **医共体智慧急诊急救大平台项目实施计划** |  | 34d | 2024-07-29 | 2024-08-31 | 9% |
| 3 | 1.1 | 转诊系统平台的调整开发 |  | 16d | 2024-07-30 | 2024-08-14 | 5% |
| 4 | 1.2 | 预检分诊上线 | fixed end | 21d | 2024-07-30 | 2024-08-19 | 30% |
| 5 | 1.3 | 统计看板、质控指标看板的配置 |  | 19d | 2024-08-05 | 2024-08-23 |  |
| 6 | 1.4 | 院内院外网络打通 |  | 1d | 2024-07-30 | 2024-07-30 |  |
| 7 | 1.5 | 设备采购及安装部署 |  | 10d | 2024-07-29 | 2024-08-07 | 10% |
| 8 | 1.6 | HIS接口对接 |  | 10d | 2024-07-30 | 2024-08-08 | 10% |
| 9 | 1.7 | 心电影像网络接口对接 |  | 5d | 2024-08-01 | 2024-08-05 | 10% |
| 10 | 1.8 | 120接口对接 |  | 15d | 2024-08-01 | 2024-08-15 | 5% |
| 11 | 1.9 | 2台急救车数字化改造 |  | 3d | 2024-08-19 | 2024-08-21 |  |
| 12 | 1.10 | 院内及急救车上医疗设备对接 |  | 5d | 2024-08-19 | 2024-08-23 |  |
| 13 | 1.11 | 系统配置及帐号授权开通 |  | 5d | 2024-08-08 | 2024-08-12 | 10% |
| 14 | 1.12 | 全业务流程测试 | fixed end | 4d | 2024-08-23 | 2024-08-26 |  |
| 15 | 1.13 | 转诊转运培训：发文通知、线上培训 |  | 1d | 2024-08-27 | 2024-08-27 |  |
| 16 | 1.14 | 试点单位上线试运行 |  | 2d | 2024-08-28 | 2024-08-29 |  |
| 17 | 1.15 | 正式上线 | fixed end | 1d | 2024-08-31 | 2024-08-31 |  |
| 18 | 2 | **数据基座建设** |  | 46d | 2024-07-16 | 2024-08-30 |  |
| 19 | 2.1 | **医共体驾驶舱** |  | 27d | 2024-07-25 | 2024-08-20 |  |
| 20 | 2.1.1 | 茂名市健康平台统计指标梳理 |  | 7d | 2024-07-25 | 2024-07-31 |  |
| 21 | 2.1.2 | 医共体急救指标梳理 |  | 7d | 2024-07-31 | 2024-08-06 |  |
| 22 | 2.1.3 | 医共体指标计算逻辑 |  | 9d | 2024-08-01 | 2024-08-09 |  |
| 23 | 2.1.4 | 医共体驾驶舱交互设计 |  | 7d | 2024-08-01 | 2024-08-07 |  |
| 24 | 2.1.5 | 医共体驾驶舱视觉设计 |  | 7d | 2024-08-02 | 2024-08-08 |  |
| 25 | 2.1.6 | 茂名市平台指标数据爬取 |  | 16d | 2024-08-02 | 2024-08-17 |  |
| 26 | 2.1.7 | 医共体驾驶舱界面开发 |  | 13d | 2024-08-08 | 2024-08-20 |  |

| ID | WBS | Task | Duration | Start | Finish |
| --- | --- | --- | --- | --- | --- |
| 27 | 2.2 | **慢病档案建立** | 46d | 2024-07-16 | 2024-08-30 |
| 28 | 2.2.1 | 省基卫数据清洗 | 4d | 2024-07-16 | 2024-07-19 |
| 29 | 2.2.2 | 省基卫数据入库 | 9d | 2024-07-18 | 2024-07-26 |
| 30 | 2.2.3 | 基层医生档案录入 | 9d | 2024-07-22 | 2024-07-30 |
| 31 | 2.2.4 | 病案系统数据清洗 | 12d | 2024-07-29 | 2024-08-09 |
| 32 | 2.2.5 | 病案系统数据入库 | 10d | 2024-08-07 | 2024-08-16 |
| 33 | 2.2.6 | i信医慢病管理数据接入 | 30d | 2024-08-01 | 2024-08-30 |
| 34 | 2.3 | **慢病档案服务** | 43d | 2024-07-19 | 2024-08-30 |
| 35 | 2.3.1 | 慢病档案系统功能开发 | 13d | 2024-07-19 | 2024-07-31 |
| 36 | 2.3.2 | 慢病档案功能测试 | 10d | 2024-07-29 | 2024-08-07 |
| 37 | 2.3.3 | 医务人员用户管理功能开发 | 14d | 2024-07-31 | 2024-08-13 |
| 38 | 2.3.4 | 医务人员用户管理功能测试 | 5d | 2024-08-12 | 2024-08-16 |
| 39 | 2.3.5 | 与i信医、急救中心对接慢病档案服务 | 17d | 2024-08-07 | 2024-08-23 |
| 40 | 2.3.6 | 与i信医对接慢病管理服务 | 13d | 2024-08-15 | 2024-08-27 |
| 41 | 2.3.7 | 测试与i信医、急救中心对接 | 11d | 2024-08-20 | 2024-08-30 |
| 42 | 2.3.8 | 与急救中心对接患者档案服务 | 1d | 2024-08-08 | 2024-08-08 |
| 43 | 2.3.9 | 与急救中心对接患者管理服务 | 1d | 2024-08-20 | 2024-08-20 |
| 44 | 2.3.10 | 测试与急救中心对接 | 1d | 2024-08-20 | 2024-08-20 |
| 45 | 2.4 | **智慧安防** | 30d | 2024-08-01 | 2024-08-30 |
| 46 | 2.4.1 | 现场会演示点确认 | 30d | 2024-08-01 | 2024-08-30 |
| 47 | 3 | **互联网+护理&县域慢病管理** | 36d | 2024-07-26 | 2024-08-30 |
| 48 | 3.1 | **互联网+护理** | 16d | 2024-07-26 | 2024-08-10 |
| 49 | 3.1.1 | 费用回传HIS | 6d | 2024-07-26 | 2024-07-31 |
| 50 | 3.1.2 | 对接电子票据 | 3d | 2024-08-05 | 2024-08-07 |
| 51 | 3.1.3 | 全流程测试 | 3d | 2024-08-08 | 2024-08-10 |

| ID | WBS | Task | Duration | Start | Finish |
| --- | --- | --- | --- | --- | --- |
| 52 | 3.2 | **县域慢病管理** | 33d | 2024-07-29 | 2024-08-30 |
| 53 | 3.2.1 | 添加就诊人新增乡/镇/街道 | 4d | 2024-07-29 | 2024-08-01 |
| 54 | 3.2.2 | 血压管理 | 9d | 2024-07-29 | 2024-08-06 |
| 55 | 3.2.3 | 血糖管理 | 9d | 2024-07-29 | 2024-08-06 |
| 56 | 3.2.4 | 体重管理 | 9d | 2024-07-29 | 2024-08-06 |
| 57 | 3.2.5 | 健康史上报 | 4d | 2024-08-05 | 2024-08-08 |
| 58 | 3.2.6 | 家庭医生问诊 | 4d | 2024-08-05 | 2024-08-08 |
| 59 | 3.2.7 | 居民端查看健康档案 | 4d | 2024-08-09 | 2024-08-12 |
| 60 | 3.2.8 | 健康宣教 | 4d | 2024-08-12 | 2024-08-15 |
| 61 | 3.2.9 | 智能随访 | 4d | 2024-08-15 | 2024-08-18 |
| 62 | 3.2.10 | 患者管理 | 3d | 2024-08-16 | 2024-08-18 |
| 63 | 3.2.11 | 患者分组 | 3d | 2024-08-16 | 2024-08-18 |
| 64 | 3.2.12 | 分级分标 | 3d | 2024-08-16 | 2024-08-18 |
| 65 | 3.2.13 | 危险预警&远程监测 | 2d | 2024-08-21 | 2024-08-22 |
| 66 | 3.2.14 | 发送群通知 | 2d | 2024-08-22 | 2024-08-23 |
| 67 | 3.2.15 | 邀请注册i信医 | 3d | 2024-08-22 | 2024-08-24 |
| 68 | 3.2.16 | 医生端查看健康档案 | 6d | 2024-08-16 | 2024-08-21 |
| 69 | 3.2.17 | 随访表单维护 | 7d | 2024-08-19 | 2024-08-25 |
| 70 | 3.2.18 | 患教文章维护 | 7d | 2024-08-19 | 2024-08-25 |
| 71 | 3.2.19 | 与数据底座对接 | 7d | 2024-08-19 | 2024-08-25 |
| 72 | 3.2.20 | 与HIS系统对接 | 7d | 2024-08-19 | 2024-08-25 |
| 73 | 3.2.21 | 全流程测试 | 3d | 2024-08-28 | 2024-08-30 |
